# Software Development

Schedule from MS Project, 2025-06-03 to 2026-02-10, costs in $.

## Calendars

- Standard: Mon-Fri 08:00-12:00, 13:00-17:00; Sat-Sun off.

## Resources

| Resource | Group | Rate |
| --- | --- | --- |
| Project Manager 3 | Project Managers | 100 |
| Project Manager 4 | Project Managers | 100 |
| Project Manager 5 | Project Managers | 100 |
| Requirement Engineer 1 | Requirement Engineers | 80 |
| Requirement Engineer 2 | Requirement Engineers | 80 |
| Requirement Engineer 7 | Requirement Engineers | 80 |
| Requirement Engineer 102 | Requirement Engineers | 80 |
| Requirement Engineer 103 | Requirement Engineers | 80 |
| Requirement Engineer 117 | Requirement Engineers | 80 |
| Requirement Engineer 118 | Requirement Engineers | 80 |
| Requirement Engineer 119 | Requirement Engineers | 80 |
| System Engineer 1 | System Engineers | 90 |
| System Engineer 2 | System Engineers | 90 |
| System Engineer 7 | System Engineers | 90 |
| System Engineer 8 | System Engineers | 90 |
| System Engineer 9 | System Engineers | 90 |
| System Engineer 204 | System Engineers | 90 |
| System Engineer 205 | System Engineers | 90 |
| System Engineer 501 | System Engineers | 90 |
| Programmer 1 | Programmers | 95 |
| Programmer 7 | Programmers | 95 |
| Programmer 8 | Programmers | 95 |
| Programmer 9 | Programmers | 95 |
| Programmer 10 | Programmers | 95 |
| Programmer 202 | Programmers | 95 |
| Programmer 203 | Programmers | 95 |
| Programmer 205 | Programmers | 95 |
| Test Engineer 1 | Test Engineers | 75 |
| Test Engineer 2 | Test Engineers | 75 |
| Test Engineer 3 | Test Engineers | 75 |
| Test Engineer 4 | Test Engineers | 75 |
| Test Engineer 302 | Test Engineers | 75 |
| Test Engineer 404 | Test Engineers | 75 |
| Test Engineer 405 | Test Engineers | 75 |
| Test Engineer 2403 | Test Engineers | 75 |
| Documentation Engineer 1 | Documentation Engineers | 60 |
| Documentation Engineer 105 | Documentation Engineers | 60 |
| Documentation Engineer 203 | Documentation Engineers | 60 |
| Documentation Engineer 204 | Documentation Engineers | 60 |
| Documentation Engineer 205 | Documentation Engineers | 60 |
| Documentation Engineer 206 | Documentation Engineers | 60 |

## Schedule

| ID | WBS | Task | Duration | Start | Finish | Predecessors | Total slack | Free slack | Constraint | Resources | Work | Cost |
| --- | --- | --- | --- | --- | --- | --- | --- | --- | --- | --- | --- | --- |
| 1 | 1 | **Project plan** | 9d | 2025-06-03 | 2025-06-13 |  |  |  |  |  | 135.46h | 12,259 |
| 2 | 1.1 | Write plan | 37.4h | 2025-06-03 | 2025-06-09 |  | 1.7d | 0d | start no earlier than 2025-06-03 | Project Manager 3 | 37.4h | 3,740 |
| 3 | 1.2 | **Review plan** | 2d | 2025-06-09 | 2025-06-11 |  |  |  |  |  | 83.86h | 7,099 |
| 4 | 1.2.1 | Preparation for review | 6.64h | 2025-06-09 | 2025-06-10 | 2 | 1.7d | 0d |  | Project Manager 5; Requirement Engineer 1; System Engineer 1; Documentation Engineer 1; Programmer 1; Test Engineer 1; Project Manager 4 | 46.48h | 3,984 |
| 5 | 1.2.2 | Review meeting | 6.23h | 2025-06-10 | 2025-06-11 | 4 | 1.7d | 0d |  | Project Manager 3; Documentation Engineer 105; Programmer 7; Requirement Engineer 2; System Engineer 2; Test Engineer 2 | 37.38h | 3,115 |
| 6 | 1.3 | Rework | 14.2h | 2025-06-11 | 2025-06-13 | 5 | 1.7d | 0d |  | Project Manager 3 | 14.2h | 1,420 |
| 7 | 2 | **Requirements** | 8d | 2025-06-13 | 2025-06-24 |  |  |  |  |  | 130.31h | 10,424.8 |
| 8 | 2.1 | Write requirements | 31.2h | 2025-06-13 | 2025-06-18 | 6 | 1.7d | 0d |  | Requirement Engineer 1 | 31.2h | 2,496 |
| 9 | 2.2 | Write use case model | 15.2h | 2025-06-13 | 2025-06-16 | 6 | 3.7d | 2d |  | Requirement Engineer 2 | 15.2h | 1,216 |
| 10 | 2.3 | **Review requirements** | 3d | 2025-06-18 | 2025-06-20 |  |  |  |  |  | 64.53h | 5,162.4 |
| 11 | 2.3.1 | Preparation for review | 9.62h | 2025-06-18 | 2025-06-20 | 8, 9 | 1.7d | 0d | start no earlier than 2025-06-17 | Requirement Engineer 102; Requirement Engineer 103; Requirement Engineer 117; Requirement Engineer 118 | 38.48h | 3,078.4 |
| 12 | 2.3.2 | Review meeting | 5.21h | 2025-06-20 | 2025-06-20 | 11 | 1.7d | 0d |  | Requirement Engineer 1; Requirement Engineer 2; Requirement Engineer 7; Requirement Engineer 103; Requirement Engineer 119 | 26.05h | 2,084 |
| 13 | 2.4 | Rework | 9.69h | 2025-06-20 | 2025-06-24 | 12 | 1.7d | 0d |  | Requirement Engineer 1; Requirement Engineer 2 | 19.38h | 1,550.4 |
| 14 | 3 | **Analysis** | 3d | 2025-06-24 | 2025-06-26 |  |  |  |  |  | 41.7h | 3,753 |
| 15 | 3.1 | Write analysis document | 4.8h | 2025-06-24 | 2025-06-24 | 13 | 1.7d | 0d |  | System Engineer 1; System Engineer 2 | 9.6h | 864 |
| 16 | 3.2 | **Review analysis document** | 2d | 2025-06-24 | 2025-06-25 |  |  |  |  |  | 15.6h | 1,404 |
| 17 | 3.2.1 | Preparation for analysis document | 2.4h | 2025-06-24 | 2025-06-24 | 15 | 1.7d | 0d |  | System Engineer 7; System Engineer 8; System Engineer 204; System Engineer 205 | 9.6h | 864 |
| 18 | 3.2.2 | Review meeting | 1.2h | 2025-06-24 | 2025-06-25 | 17 | 1.7d | 0d |  | System Engineer 1; System Engineer 2; System Engineer 9; System Engineer 501; System Engineer 204 | 6h | 540 |
| 19 | 3.3 | Rework | 8.25h | 2025-06-25 | 2025-06-26 | 18 | 1.7d | 0d |  | System Engineer 1; System Engineer 2 | 16.5h | 1,485 |
| 20 | 4 | **Design** | 13d | 2025-06-26 | 2025-07-14 |  |  |  |  |  | 235.97h | 21,237.3 |
| 21 | 4.1 | Write DD | 26.8h | 2025-06-26 | 2025-07-01 | 19 | 155.79d | 0d |  | System Engineer 7 | 26.8h | 2,412 |
| 22 | 4.2 | **Review DD** | 4d | 2025-07-01 | 2025-07-04 |  |  |  |  |  | 66.99h | 6,029.1 |
| 23 | 4.2.1 | Preparation for DD | 14.89h | 2025-07-01 | 2025-07-03 | 21 | 155.79d | 0d |  | System Engineer 1; System Engineer 2; System Engineer 8 | 44.67h | 4,020.3 |
| 24 | 4.2.2 | Review meeting | 5.58h | 2025-07-03 | 2025-07-04 | 23 | 155.79d | 0d |  | System Engineer 1; System Engineer 2; System Engineer 7; System Engineer 8 | 22.32h | 2,008.8 |
| 25 | 4.3 | Rework | 17.6h | 2025-07-04 | 2025-07-08 | 24 | 155.79d |  |  | System Engineer 7 | 17.6h | 1,584 |
| 26 | 4.4 | Write DM | 69h | 2025-06-26 | 2025-07-08 | 19 | 1.7d | 0d |  | System Engineer 9 | 69h | 6,210 |

Notes:
- 4: PM3 absent
- 5: PM3 returns
- 11: RE1,RE2 absent
- 12: RE1,RE2 returns
- 17: SE1,SE2 absent
- 18: SE1,SE2 returns
- 23: SE7 absent
- 24: SE7 returns

| ID | WBS | Task | Duration | Start | Finish | Predecessors | Total slack | Free slack | Resources | Work | Cost |
| --- | --- | --- | --- | --- | --- | --- | --- | --- | --- | --- | --- |
| 27 | 4.5 | **Review DM** | 3d | 2025-07-08 | 2025-07-10 |  |  |  |  | 36.78h | 3,310.2 |
| 28 | 4.5.1 | Preparation for DM | 7.66h | 2025-07-08 | 2025-07-09 | 26 | 1.7d | 0d | System Engineer 1; System Engineer 2; System Engineer 7 | 22.98h | 2,068.2 |
| 29 | 4.5.2 | Review meeting | 3.45h | 2025-07-09 | 2025-07-10 | 28 | 1.7d | 0d | System Engineer 9; System Engineer 1; System Engineer 2; System Engineer 7 | 13.8h | 1,242 |
| 30 | 4.6 | Rework | 18.8h | 2025-07-10 | 2025-07-14 | 29 | 1.7d | 0d | System Engineer 9 | 18.8h | 1,692 |
| 31 | 5 | **Coding and unit test** | 53d | 2025-07-14 | 2025-09-24 |  |  |  |  | 1112.51h | 96,792.45 |
| 32 | 5.1 | Write code | 86.25h | 2025-07-14 | 2025-07-29 | 30 | 1.7d | 0d | Programmer 1; Programmer 7; Programmer 8; Programmer 9 | 345h | 32,775 |
| 33 | 5.2 | **Unit testing** | 42d | 2025-07-29 | 2025-09-24 |  |  |  |  | 652.8h | 53,120 |
| 34 | 5.2.1 | Prepare/execute test cases | 17.4d | 2025-07-29 | 2025-08-21 | 32 | 1.7d | 0d | Test Engineer 1; Test Engineer 2 | 278.4h | 20,880 |
| 35 | 5.2.2 | Fix found defects | 13d | 2025-08-21 | 2025-09-09 | 34 | 1.7d | 0d | Programmer 10; Programmer 202 | 208h | 19,760 |
| 36 | 5.2.3 | Test fixed defects | 10.4d | 2025-09-09 | 2025-09-24 | 35 | 1.7d | 0d | Test Engineer 3; Test Engineer 4 | 166.4h | 12,480 |
| 37 | 5.3 | **Code inspection** | 6d | 2025-07-29 | 2025-08-05 |  |  |  |  | 114.71h | 10,897.45 |
| 38 | 5.3.1 | Preparation for code inspection | 7.84h | 2025-07-29 | 2025-07-30 | 32 | 37.11d | 0d | Programmer 203; Programmer 205; Programmer 10; Programmer 202 | 31.36h | 2,979.2 |
| 39 | 5.3.2 | Code inspection meeting | 4.31h | 2025-07-30 | 2025-07-30 | 38 | 37.11d | 0d | Programmer 1; Programmer 10; Programmer 203; Programmer 202; Programmer 7 | 21.55h | 2,047.25 |
| 40 | 5.3.3 | Rework | 30.9h | 2025-07-30 | 2025-08-05 | 39 | 37.11d | 35.42d | Programmer 1; Programmer 7 | 61.8h | 5,871 |
| 41 | 6 | **System integration testing** | 35d | 2025-09-24 | 2025-11-11 |  |  |  |  | 600.08h | 48,087.6 |
| 42 | 6.1 | Write test plan | 14.9d | 2025-09-24 | 2025-10-14 | 36, 40 | 1.7d | 0d | Test Engineer 1; Test Engineer 2 | 238.4h | 17,880 |
| 43 | 6.2 | **Review TP** | 6d | 2025-10-14 | 2025-10-21 |  |  |  |  | 109.2h | 8,190 |
| 44 | 6.2.1 | Preparation for TP | 18.62h | 2025-10-14 | 2025-10-17 | 42 | 1.7d | 0d | Test Engineer 3; Test Engineer 4; Test Engineer 302; Test Engineer 2 | 74.5h | 5,587.5 |
| 45 | 6.2.2 | Review TP meeting | 1.99h | 2025-10-17 | 2025-10-17 | 44 | 1.7d | 0d | Test Engineer 2; Test Engineer 1; Test Engineer 3; Test Engineer 4; Test Engineer 302 | 9.94h | 745.5 |
| 46 | 6.2.3 | Rework | 12.38h | 2025-10-17 | 2025-10-21 | 45 | 1.7d | 0d | Test Engineer 1; Test Engineer 2 | 24.76h | 1,857 |
| 47 | 6.3 | Execute TP | 2.3d | 2025-10-21 | 2025-10-23 | 46 | 1.7d | 0d | Test Engineer 1; Test Engineer 2 | 36.8h | 2,760 |
| 48 | 6.4 | Fix found defects | 9.63d | 2025-10-23 | 2025-11-06 | 47 | 1.7d | 0d | Programmer 202; Programmer 203 | 154.08h | 14,637.6 |
| 49 | 6.5 | Test fixed defects | 3.85d | 2025-11-06 | 2025-11-11 | 48 | 1.7d | 0d | Test Engineer 404; Test Engineer 405 | 61.6h | 4,620 |
| 50 | 7 | **Load, stress and performance testing** | 53d | 2025-11-11 | 2026-01-22 |  |  |  |  | 878h | 68,218 |
| 51 | 7.1 | Write test plan | 25.13d | 2025-11-11 | 2025-12-16 | 49 | 1.7d | 0d | Test Engineer 2; Test Engineer 1 | 402.08h | 30,156 |

Notes:
- 28: SE9 absent
- 29: SE9 returns
- 38: PE1,PE7 absent
- 39: PE1,PE7 returns
- 44: TE1,TE2 absent
- 45: TE1,TE2 returns

| ID | WBS | Task | Duration | Start | Finish | Predecessors | Total slack | Free slack | Resources | Work | Cost |
| --- | --- | --- | --- | --- | --- | --- | --- | --- | --- | --- | --- |
| 52 | 7.2 | **Review TP** | 6d | 2025-12-16 | 2025-12-23 |  |  |  |  | 129.84h | 9,738 |
| 53 | 7.2.1 | Preparation for TP | 16.75h | 2025-12-16 | 2025-12-19 | 51 | 1.7d | 0d | Test Engineer 302; Test Engineer 404; Test Engineer 405; Test Engineer 2403 | 67h | 5,025 |
| 54 | 7.2.2 | Review TP meeting | 6.7h | 2025-12-19 | 2025-12-19 | 53 | 1.7d | 0d | Test Engineer 3; Test Engineer 2403; Test Engineer 2; Test Engineer 1; Test Engineer 4 | 33.5h | 2,512.5 |
| 55 | 7.2.3 | Rework | 14.67h | 2025-12-19 | 2025-12-23 | 54 | 1.7d | 0d | Test Engineer 2; Test Engineer 1 | 29.34h | 2,200.5 |
| 56 | 7.3 | Execute TP | 9.6d | 2025-12-23 | 2026-01-06 | 55 | 1.7d | 0d | Test Engineer 2; Test Engineer 302 | 153.6h | 11,520 |
| 57 | 7.4 | Fix found defects | 7.4d | 2026-01-06 | 2026-01-15 | 56 | 1.7d | 0d | Programmer 9; Programmer 10 | 118.4h | 11,248 |
| 58 | 7.5 | Test fixed defects | 4.63d | 2026-01-15 | 2026-01-22 | 57 | 1.7d | 0d | Test Engineer 2403; Test Engineer 405 | 74.08h | 5,556 |
| 59 | 8 | **Documentation** | 6d | 2026-01-22 | 2026-01-29 |  |  |  |  | 94.84h | 5,690.4 |
| 60 | 8.1 | User documentation | 14.1h | 2026-01-22 | 2026-01-26 | 58 | 1.7d | 0d | Documentation Engineer 1; Documentation Engineer 105 | 28.2h | 1,692 |
| 61 | 8.2 | **Review UD** | 4d | 2026-01-26 | 2026-01-29 |  |  |  |  | 66.64h | 3,998.4 |
| 62 | 8.2.1 | Preparation for UD review | 8.06h | 2026-01-26 | 2026-01-27 | 60 | 1.7d | 0d | Documentation Engineer 203; Documentation Engineer 204; Documentation Engineer 205; Documentation Engineer 206 | 32.24h | 1,934.4 |
| 63 | 8.2.2 | Review UD meeting | 2.82h | 2026-01-27 | 2026-01-27 | 62 | 1.7d | 0d | Documentation Engineer 1; Documentation Engineer 206; Documentation Engineer 105; Documentation Engineer 204; Documentation Engineer 205 | 14.1h | 846 |
| 64 | 8.2.3 | Rework | 10.15h | 2026-01-27 | 2026-01-28 | 63 | 1.7d | 0d | Documentation Engineer 1; Documentation Engineer 105 | 20.3h | 1,218 |
| 65 | 9 | **Training material** | 10d | 2026-01-28 | 2026-02-10 |  |  |  |  | 163.1h | 9,786 |
| 66 | 9.1 | Tutorial | 33.25h | 2026-01-28 | 2026-02-03 | 64 | 1.7d | 0d | Documentation Engineer 203; Documentation Engineer 204 | 66.5h | 3,990 |
| 67 | 9.2 | **Review tutorial** | 5d | 2026-02-03 | 2026-02-09 |  |  |  |  | 96.6h | 5,796 |
| 68 | 9.2.1 | Preparation for tutorial review | 13.3h | 2026-02-03 | 2026-02-05 | 66 | 1.7d | 0d | Documentation Engineer 1; Documentation Engineer 105; Documentation Engineer 205; Documentation Engineer 206 | 53.2h | 3,192 |
| 69 | 9.2.2 | Review tutorial meeting | 5.32h | 2026-02-05 | 2026-02-06 | 68 | 1.7d | 0d | Documentation Engineer 203; Documentation Engineer 204; Documentation Engineer 1; Documentation Engineer 206; Documentation Engineer 105 | 26.6h | 1,596 |
| 70 | 9.2.3 | Rework | 8.4h | 2026-02-06 | 2026-02-09 | 69 | 1.7d |  | Documentation Engineer 203; Documentation Engineer 204 | 16.8h | 1,008 |

Notes:
- 53: TE1,TE2 absent
- 54: TE1,TE2 returns
- 62: DE1,DE105 absent
- 63: DE1,DE105 returns
- 68: DE203,DE204 absent
- 69: DE203,DE204 returns
