# SampleProject#2

Schedule from MS Project, 2023-05-25 to 2023-12-19.
HP

## Calendars

- Standard: Mon-Fri 08:00-12:00, 13:00-17:00; Sat-Sun off.

## Resources

| Resource |
| --- |
| PM1 |
| PM2 |
| PM3 |
| RE1 |
| RE2 |
| RE3 |
| RE8 |
| RE9 |
| RE10 |
| RE13 |
| SE1 |
| SE2 |
| SE3 |
| SE4 |
| SE8 |
| SE9 |
| SE11 |
| SE12 |
| SE13 |
| PE1 |
| PE2 |
| PE3 |
| PE4 |
| PE22 |
| PE23 |
| PE24 |
| PE25 |
| PE26 |
| PE27 |
| TE1 |
| TE2 |
| TE3 |
| TE4 |
| TE44 |
| TE45 |
| TE46 |
| TE47 |
| DE1 |
| DE2 |
| DE3 |
| DE4 |
| DE5 |
| RE50 |
| RE51 |
| RE52 |
| RE53 |
| SE30 |
| SE31 |
| SE32 |
| SE33 |
| PE60 |
| PE61 |
| PE65 |
| PE66 |
| PE67 |
| PE68 |
| PE69 |
| TE62 |
| TE63 |
| TE64 |
| TE67 |
| DE71 |
| DE72 |
| DE73 |
| DE74 |
| P61 |

## Schedule

| ID | WBS | Task | Duration | Start | Finish | Predecessors | Total slack | Resources | Work |
| --- | --- | --- | --- | --- | --- | --- | --- | --- | --- |
| 1 | 1 | **Project1_ResourcePool** | 149d | 2023-05-25 | 2023-12-19 |  |  |  | 5528h |
| 2 | 1.1 | **Project Plan** | 11d | 2023-05-25 | 2023-06-08 |  | 0d |  | 368h |
| 3 | 1.1.1 | Write Plan | 5d | 2023-05-25 | 2023-05-31 |  | 0d | SE13; PM2; PM3 | 120h |
| 4 | 1.1.2 | **Review Plan** | 5d | 2023-06-01 | 2023-06-07 | 3 | 0d |  | 240h |
| 5 | 1.1.2.1 | Preparation for review | 3d | 2023-06-01 | 2023-06-05 | 3 | 0d | PE1; PE22; SE1; TE1; PM3; DE5 | 144h |
| 6 | 1.1.2.2 | Review Meeting | 2d | 2023-06-06 | 2023-06-07 | 5 | 0d | DE1; PE1; PE22; SE1; TE1; SE13 | 96h |
| 7 | 1.1.3 | Rework | 1d | 2023-06-08 | 2023-06-08 | 6 | 0d | SE13 | 8h |
| 8 | 1.2 | **Risk Mitigation and Contingency Plan** | 8d | 2023-06-09 | 2023-06-20 | 7 | 0d |  | 240h |
| 9 | 1.2.1 | Write Plan | 2d | 2023-06-09 | 2023-06-12 | 7 | 0d | SE13 | 16h |
| 10 | 1.2.2 | **Review Plan** | 5d | 2023-06-13 | 2023-06-19 | 9 | 0d |  | 216h |
| 11 | 1.2.2.1 | Preparation for review | 3d | 2023-06-13 | 2023-06-15 | 9 | 0d | DE1; PE1; PE22; SE1; TE1 | 120h |
| 12 | 1.2.2.2 | Review Meeting | 2d | 2023-06-16 | 2023-06-19 | 11 | 0d | DE1; PE1; PE22; SE1; TE1; SE13 | 96h |
| 13 | 1.2.3 | Rework | 1d | 2023-06-20 | 2023-06-20 | 12 | 0d | SE13 | 8h |
| 14 | 1.3 | **Requirement** | 18d | 2023-06-21 | 2023-07-14 | 13, 7 | 0d |  | 704h |
| 15 | 1.3.1 | Write requirements | 3d | 2023-06-21 | 2023-06-23 | 13, 7 | 0d | PE22; RE2; RE3; RE8; RE9; RE10 | 144h |
| 16 | 1.3.2 | Write Use Case Model | 2d | 2023-06-26 | 2023-06-27 | 15 | 0d | RE8; PE22; RE2; RE3; RE9; RE10 | 96h |
| 17 | 1.3.3 | **Review Requirements/ Use Case Model** | 11d | 2023-06-28 | 2023-07-12 | 16 | 0d |  | 384h |
| 18 | 1.3.3.1 | Preparation for review( Requirements) | 3d | 2023-06-28 | 2023-06-30 | 16 | 0d | DE1; PE1; SE1; TE1 | 96h |
| 19 | 1.3.3.2 | Preparation for review( UseCases) | 4d | 2023-07-03 | 2023-07-06 | 18 | 0d | DE2; PE2; SE2; TE2 | 128h |
| 20 | 1.3.3.3 | Review Meeting(Requirements) | 2d | 2023-07-07 | 2023-07-10 | 19 | 0d | DE1; PE1; SE1; TE1; RE3 | 80h |
| 21 | 1.3.3.4 | Review Meeting(UseCases) | 2d | 2023-07-11 | 2023-07-12 | 20 | 0d | DE2; PE2; SE2; TE2; RE10 | 80h |
| 22 | 1.3.4 | Rework | 2d | 2023-07-13 | 2023-07-14 | 21 | 0d | PE22; RE2; RE10; RE3; RE8 | 80h |
| 23 | 1.4 | **Analysis** | 13d | 2023-07-17 | 2023-08-02 | 22 | 0d |  | 416h |
| 24 | 1.4.1 | Write Analysis Document | 1d | 2023-07-17 | 2023-07-17 | 22 | 0d | SE1; SE2; SE3; SE4; SE8 | 40h |

| ID | WBS | Task | Duration | Start | Finish | Predecessors | Total slack | Resources | Work |
| --- | --- | --- | --- | --- | --- | --- | --- | --- | --- |
| 25 | 1.4.2 | **Review Analysis Document** | 7d | 2023-07-18 | 2023-07-26 | 24 | 0d |  | 256h |
| 26 | 1.4.2.1 | Preparation for Analysis Document | 3d | 2023-07-18 | 2023-07-20 | 24 | 0d | DE1; PE1; PE22; TE1 | 96h |
| 27 | 1.4.2.2 | Review Meeting | 4d | 2023-07-21 | 2023-07-26 | 26 | 0d | DE1; PE1; PE22; TE1; SE2 | 160h |
| 28 | 1.4.3 | Rework | 5d | 2023-07-27 | 2023-08-02 | 27 | 0d | SE1; SE2; SE4 | 120h |
| 29 | 1.5 | **Design** | 24d | 2023-08-03 | 2023-09-05 | 28 | 0d |  | 736h |
| 30 | 1.5.1 | Write DD | 3d | 2023-08-03 | 2023-08-07 | 28 | 0d | SE1; SE12; SE13 | 72h |
| 31 | 1.5.2 | **Review DD** | 4d | 2023-08-08 | 2023-08-11 | 30 | 0d |  | 136h |
| 32 | 1.5.2.1 | Preparation for DD | 3d | 2023-08-08 | 2023-08-10 | 30 | 0d | DE1; PE1; PE22; TE1 | 96h |
| 33 | 1.5.2.2 | Review Meeting | 1d | 2023-08-11 | 2023-08-11 | 32 | 0d | DE1; PE1; PE22; TE1; SE12 | 40h |
| 34 | 1.5.3 | Rework | 3d | 2023-08-14 | 2023-08-16 | 33 | 0d | SE1; SE12 | 48h |
| 35 | 1.5.4 | Write Data Model (DM) | 3d | 2023-08-17 | 2023-08-21 | 34 | 0d | SE1; SE2; SE3; SE4 | 96h |
| 36 | 1.5.5 | **Review DM** | 8d | 2023-08-22 | 2023-08-31 | 35 | 0d |  | 288h |
| 37 | 1.5.5.1 | Preparation for DM | 4d | 2023-08-22 | 2023-08-25 | 35 | 0d | DE1; PE1; PE22; TE1 | 128h |
| 38 | 1.5.5.2 | Review Meeting | 4d | 2023-08-28 | 2023-08-31 | 37 | 0d | DE1; PE1; PE22; TE1; SE3 | 160h |
| 39 | 1.5.6 | Rework | 3d | 2023-09-01 | 2023-09-05 | 38 | 0d | SE1; SE2; SE3; SE4 | 96h |
| 40 | 1.6 | **Coding and unit test** | 34d | 2023-09-06 | 2023-10-23 | 39 | 0d |  | 1560h |
| 41 | 1.6.1 | Write Code | 12d | 2023-09-06 | 2023-09-21 | 39 | 0d | PE1; PE2; PE3; PE4; PE22; PE23; PE24 | 672h |
| 42 | 1.6.2 | **Unit Testing** | 10d | 2023-09-22 | 2023-10-05 | 41 | 0d |  | 480h |
| 43 | 1.6.2.1 | Prepare/Execute Test Cases | 5d | 2023-09-22 | 2023-09-28 | 41 | 0d | PE1; PE2; PE3; PE4; PE22; PE23 | 240h |
| 44 | 1.6.2.2 | Fix Found Defects | 3d | 2023-09-29 | 2023-10-03 | 43 | 0d | PE1; PE3; PE4; PE22 | 96h |
| 45 | 1.6.2.3 | Test Fixed Defects | 2d | 2023-10-04 | 2023-10-05 | 44 | 0d | PE1; PE2; PE3; PE4; PE22; PE23; PE24; PE25; PE26 | 144h |
| 46 | 1.6.3 | **Code Inspection** | 12d | 2023-10-06 | 2023-10-23 | 45 | 0d |  | 408h |
| 47 | 1.6.3.1 | Preparation for Code Inspection | 5d | 2023-10-06 | 2023-10-12 | 45 | 0d | DE1; PE22; SE1; TE1 | 160h |
| 48 | 1.6.3.2 | Code Inspection Meeting | 3d | 2023-10-13 | 2023-10-17 | 47 | 0d | DE1; PE22; SE1; TE1; PE1 | 120h |
| 49 | 1.6.3.3 | Rework | 4d | 2023-10-18 | 2023-10-23 | 48 | 0d | PE1; PE2; PE3; PE22 | 128h |

| ID | WBS | Task | Duration | Start | Finish | Predecessors | Total slack | Resources | Work |
| --- | --- | --- | --- | --- | --- | --- | --- | --- | --- |
| 50 | 1.7 | **Testing** | 33d | 2023-10-24 | 2023-12-07 | 49, 22 | 0d |  | 1240h |
| 51 | 1.7.1 | Write test plan (TP) | 11d | 2023-10-24 | 2023-11-07 | 49, 22 | 0d | TE1; TE2; TE3; TE4 | 352h |
| 52 | 1.7.2 | **Review TP** | 9d | 2023-11-08 | 2023-11-20 | 51 | 0d |  | 288h |
| 53 | 1.7.2.1 | Preparation for TP | 3d | 2023-11-08 | 2023-11-10 | 51 | 0d | DE1; PE1; PE22; SE1 | 96h |
| 54 | 1.7.2.2 | Review TP Meeting | 3d | 2023-11-13 | 2023-11-15 | 53 | 0d | DE1; PE1; PE22; SE1; TE2 | 120h |
| 55 | 1.7.2.3 | Rework | 3d | 2023-11-16 | 2023-11-20 | 54 | 0d | TE1; TE2; TE3 | 72h |
| 56 | 1.7.3 | Execute TP (test cases) | 4d | 2023-11-21 | 2023-11-24 | 55, 49 | 0d | TE1; TE2; TE3; TE4; TE44; TE45 | 192h |
| 57 | 1.7.4 | Fix Found Defects | 5d | 2023-11-27 | 2023-12-01 | 56 | 0d | PE1; PE2; PE3; PE4; PE22; PE23; PE24 | 280h |
| 58 | 1.7.5 | Test Fixed Defects | 4d | 2023-12-04 | 2023-12-07 | 57 | 0d | TE1; TE2; TE3; TE4 | 128h |
| 59 | 1.8 | **Documentation** | 8d | 2023-12-08 | 2023-12-19 | 58, 22 | 0d |  | 264h |
| 60 | 1.8.1 | User Documentation | 3d | 2023-12-08 | 2023-12-12 | 58, 22 | 0d | DE1; DE2; DE3; DE4 | 96h |
| 61 | 1.8.2 | **Review UD** | 5d | 2023-12-13 | 2023-12-19 | 60 | 0d |  | 168h |
| 62 | 1.8.2.1 | Preparation for UD Review | 2d | 2023-12-13 | 2023-12-14 | 60 | 0d | PE24; RE2; SE2; TE3 | 64h |
| 63 | 1.8.2.2 | Review UD Meeting | 2d | 2023-12-15 | 2023-12-18 | 62 | 0d | PE24; RE2; SE2; TE3; DE3 | 80h |
| 64 | 1.8.2.3 | Rework | 1d | 2023-12-19 | 2023-12-19 | 63 | 0d | DE1; DE2; DE3 | 24h |
